# trWorkbench 1.0

Schedule from MS Project, 2008-03-19 to 2008-12-05, A marks actual dates.
NCI

## Calendars

- Standard: Mon-Fri 08:00-12:00, 13:00-17:00; Sat-Sun off. Exceptions (off unless hours are given): 2008-05-26, 2008-07-04, 2008-09-01.

## Resources

| Resource |
| --- |
| SM |
| ET |
| TJ |
| MH |
| SJ |
| SM |
| WF |
| JP |
| SR |
| MR |
| ML |
| LN |
| TBD |
| QA |

## Schedule

| ID | WBS | Task | Duration | Start | Finish | Predecessors | Complete | Remaining | Total slack | Free slack | Constraint | Resources | Work | Actual work |
| --- | --- | --- | --- | --- | --- | --- | --- | --- | --- | --- | --- | --- | --- | --- |
| 1 | 1 | **caIntegrator2 1.0** | 185d? | 2008-03-19 A | 2008-12-05 |  | 31% | 127.85d? | 0d |  |  |  | 6666.67h | 2368h |
| 2 | 1.1 | **Inception phase** | 23d? | 2008-03-19 A | 2008-04-18 |  | 5% | 21.76d? | 162d |  |  |  | 752h | 32h |
| 3 | 1.1.1 | **Inception Iteration 1** | 23d? | 2008-03-19 A | 2008-04-18 |  | 5% | 21.76d? | 162d |  |  |  | 752h | 32h |
| 4 | 1.1.1.1 | **Requirements** | 16d? | 2008-03-19 A | 2008-04-09 |  | 29% | 11.43d? | 169d |  |  |  | 112h | 32h |
| 5 | 1.1.1.1.1 | Develop Vision | 2d? | 2008-03-19 A | 2008-03-20 A |  | 100% |  |  |  |  | SM | 16h | 16h |
| 6 | 1.1.1.1.2 | Find Actors and Use Cases | 2d | 2008-03-19 A | 2008-03-20 A |  | 100% |  |  |  |  | ET | 16h | 16h |
| 7 | 1.1.1.1.3 | Detail a Use Case (multiple) | 5d | 2008-03-27 | 2008-04-02 | 6 |  |  | 169d | 0d | finish no earlier than 2008-04-02 | ET | 40h |  |
| 8 | 1.1.1.1.4 | Finalize Use Case Model | 5d | 2008-04-03 | 2008-04-09 | 7 |  |  | 169d |  | start no earlier than 2008-04-02 | ET | 40h |  |
| 9 | 1.1.1.2 | **Analysis and Design** | 18d | 2008-03-26 | 2008-04-18 |  |  |  | 162d |  |  |  | 432h |  |
| 10 | 1.1.1.2.1 | Architectural Analysis | 4d | 2008-03-26 | 2008-03-31 |  |  |  | 176d |  | start no earlier than 2008-03-26 | ET [50%]; MH [50%] | 24h |  |
| 11 | 1.1.1.2.2 | **Construct Architectural Proof of Concept** | 17d | 2008-03-27 | 2008-04-18 |  |  |  | 162d |  |  |  | 408h |  |
| 12 | 1.1.1.2.2.1 | Investigate clinical data representation approaches | 12d | 2008-03-27 | 2008-04-11 |  |  |  | 103d | 0d | start no earlier than 2008-03-27 | MH | 96h |  |
| 13 | 1.1.1.2.2.2 | Analyse genomic data storage and retrieval | 8d | 2008-04-02 | 2008-04-11 |  |  |  | 167d |  | finish no earlier than 2008-04-11 | ET; MH; TJ | 192h |  |
| 14 | 1.1.1.2.2.3 | Define integrated object model (clinical, genomic, imaging) | 5d | 2008-04-14 | 2008-04-18 | 12 |  |  | 162d |  |  | ET; MH; TJ | 120h |  |
| 15 | 1.1.1.3 | **UI Analysis** | 7d? | 2008-03-27 | 2008-04-04 |  |  |  | 172d |  |  |  | 56h |  |
| 16 | 1.1.1.3.1 | Analysis of existing caIntegrator UI and Analysis tools (KM Plots, GenePattern etc) | 7d? | 2008-03-27 | 2008-04-04 |  |  |  | 113d |  | finish no earlier than 2008-04-04 | TJ | 56h |  |
| 17 | 1.1.1.4 | **Project Management** | 23d? | 2008-03-19 | 2008-04-18 |  |  |  | 162d |  |  |  | 152h |  |
| 18 | 1.1.1.4.1 | Develop Iteration Plan: I1 | 3d | 2008-03-19 | 2008-03-21 |  |  |  | 123d |  |  | SJ | 24h |  |
| 19 | 1.1.1.4.2 | Identify and Assess Risks | 10d | 2008-03-24 | 2008-04-04 |  |  |  | 113d |  | finish no earlier than 2008-04-04 | SJ | 80h |  |
| 20 | 1.1.1.4.3 | Develop Iteration Plan: E1 | 5d? | 2008-04-14 | 2008-04-18 |  |  |  | 103d |  | finish no earlier than 2008-04-18 | SJ | 40h |  |
| 21 | 1.1.1.4.4 | Assess Iteration | 1d? | 2008-04-18 | 2008-04-18 |  |  |  | 103d |  | start no earlier than 2008-04-18 | SJ | 8h |  |
| 22 | 1.1.1.5 | **Environment** | 5d? | 2008-04-14 | 2008-04-18 |  |  |  | 162d |  |  |  |  |  |
| 23 | 1.1.1.5.1 | Setup Tools | 5d? | 2008-04-14 | 2008-04-18 |  |  |  | 53d |  | finish no earlier than 2008-04-18 |  |  |  |
| 24 | 1.2 | Inception Complete | 1d? | 2008-04-18 | 2008-04-18 |  |  |  | 0d |  | finish no earlier than 2008-04-18 |  |  |  |

Notes:
- 5: - Already have Subha's Vision content / - Record Features (in GForge) / - Record non-functional requirements at this level (will be in Supplementary Specification in Elaboration)
- 10: Develop Architecture Overview / Survey Available Assets / Define the High-Level Organization of Subsystems / Identify Key Abstractions / Develop Deployment Overview
- 19: - Ongoing
- 23: GForge / Subversion / Enterprise Architect / Choose IDE approach

| ID | WBS | Task | Duration | Start | Finish | Predecessors | Complete | Remaining | Total slack | Free slack | Constraint | Resources | Work | Actual work |
| --- | --- | --- | --- | --- | --- | --- | --- | --- | --- | --- | --- | --- | --- | --- |
| 25 | 1.3 | **Elaboration Phase** | 162d? | 2008-04-21 A | 2008-12-05 | 24 | 33% | 108.16d? | 0d |  |  |  | 5914.67h | 2336h |
| 26 | 1.3.1 | **Elaboration - Iteration 1** | 20d? | 2008-04-21 A | 2008-05-16 |  | 80% | 4.06d? | 142d |  |  |  | 1738.67h | 1416h |
| 27 | 1.3.1.1 | **Project Management** | 20d? | 2008-04-21 A | 2008-05-16 A |  | 100% |  |  |  |  |  | 328h | 328h |
| 28 | 1.3.1.1.1 | Iteration Plan | 4d? | 2008-04-28 A | 2008-05-01 A |  | 100% |  |  |  | start no earlier than 2008-04-28 | SJ | 32h | 32h |
| 29 | 1.3.1.1.2 | Risk Management | 17d? | 2008-04-24 A | 2008-05-16 A |  | 100% |  |  |  | start no earlier than 2008-04-24 | SJ | 136h | 136h |
| 30 | 1.3.1.1.3 | Manage communication (listserv, skype etc) | 20d? | 2008-04-21 A | 2008-05-16 A |  | 100% |  |  |  | finish no earlier than 2008-05-16 | SJ | 160h | 160h |
| 31 | 1.3.1.2 | **Requirements** | 8d? | 2008-04-28 A | 2008-05-07 |  | 33% | 5.33d? | 149d |  |  |  | 288h | 96h |
| 32 | 1.3.1.2.1 | **Revise Inception Use Cases** | 4d | 2008-04-28 A | 2008-05-01 A |  | 100% |  |  |  |  |  | 32h | 32h |
| 33 | 1.3.1.2.1.1 | Gene Expression | 4d | 2008-04-28 A | 2008-05-01 A |  | 100% |  |  |  | start no earlier than 2008-04-28 | ET | 32h | 32h |
| 34 | 1.3.1.2.2 | **Elaboration Use Case definition** | 8d? | 2008-04-28 A | 2008-05-07 |  | 25% | 6d? | 149d |  |  |  | 256h | 64h |
| 35 | 1.3.1.2.2.1 | Imaging | 8d? | 2008-04-28 A | 2008-05-07 A |  | 100% |  |  |  | finish no earlier than 2008-05-07 | ET | 64h | 64h |
| 36 | 1.3.1.2.2.2 | Methylation data | 8d? | 2008-04-28 | 2008-05-07 |  |  |  | 149d |  | start no earlier than 2008-04-28 | ET | 64h |  |
| 37 | 1.3.1.2.2.3 | Update study | 8d? | 2008-04-28 | 2008-05-07 |  |  |  | 149d |  | start no earlier than 2008-04-28 | ET | 64h |  |
| 38 | 1.3.1.2.2.4 | Security requirements | 8d? | 2008-04-28 | 2008-05-07 |  |  |  | 149d |  | start no earlier than 2008-04-28 | ET | 64h |  |
| 39 | 1.3.1.3 | **Analysis and Design** | 15d? | 2008-04-21 A | 2008-05-09 |  | 85% | 2.27d? | 58.33d | 2d |  |  | 634.67h | 528h |
| 40 | 1.3.1.3.1 | Identify subsystems | 10d? | 2008-04-21 A | 2008-05-02 A |  | 100% |  |  |  | finish no earlier than 2008-05-02 | MH | 80h | 80h |
| 41 | 1.3.1.3.2 | Identify risk characteristics | 8d? | 2008-04-21 A | 2008-04-30 A |  | 100% |  |  |  | start no earlier than 2008-04-21 | MH | 64h | 64h |
| 42 | 1.3.1.3.3 | **Use-case design** | 10d | 2008-04-21 A | 2008-05-02 |  | 50% | 5d | 63.33d |  |  |  | 266.67h | 160h |
| 43 | 1.3.1.3.3.1 | manage queries (create and execute genomic with clinical) | 10d | 2008-04-21 | 2008-05-02 |  |  |  | 63.33d |  | finish no earlier than 2008-05-02 | MH; ET | 106.67h |  |
| 44 | 1.3.1.3.3.2 | Perform Analysis (genepattern) | 10d | 2008-04-21 A | 2008-05-02 A |  | 100% |  |  |  |  | MH; TJ | 160h | 160h |
| 45 | 1.3.1.3.4 | Object Model | 10d | 2008-04-21 A | 2008-05-02 A |  | 100% |  |  |  |  | MH | 80h | 80h |
| 46 | 1.3.1.3.5 | caDSR metadata management | 8d | 2008-04-30 A | 2008-05-09 A |  | 100% |  |  |  | start no earlier than 2008-04-30 | MH | 64h | 64h |
| 47 | 1.3.1.3.6 | Implementation model | 10d | 2008-04-21 A | 2008-05-02 A |  | 100% |  |  |  |  | MH | 80h | 80h |
| 48 | 1.3.1.4 | **Implementation** | 15d? | 2008-04-28 A | 2008-05-16 |  | 96% | 0.6d? | 142d |  |  |  | 280h | 272h |
| 49 | 1.3.1.4.1 | HTP data management | 10d | 2008-05-05 A | 2008-05-16 A |  | 100% |  |  |  | start no earlier than 2008-05-05 | ET | 80h | 80h |
| 50 | 1.3.1.4.2 | Query | 10d | 2008-05-05 A | 2008-05-16 A |  | 100% |  |  |  | start no earlier than 2008-05-05 | ET; TJ | 160h | 160h |
| 51 | 1.3.1.4.3 | caCore Code Generation | 5d? | 2008-04-28 A | 2008-05-02 |  | 80% | 1d? | 152d |  | start no earlier than 2008-04-28 | ET | 40h | 32h |

| ID | WBS | Task | Type | Duration | Start | Finish | Predecessors | Complete | Total slack | Free slack | Constraint | Resources | Work | Actual work |
| --- | --- | --- | --- | --- | --- | --- | --- | --- | --- | --- | --- | --- | --- | --- |
| 52 | 1.3.1.5 | **Test** |  | 3d | 2008-05-14 | 2008-05-16 |  |  | 56.33d | 0d |  |  |  |  |
| 53 | 1.3.1.5.1 | Selenium testing framework(stretch) |  | 3d | 2008-05-14 | 2008-05-16 | 39 |  | 56.33d |  | finish no earlier than 2008-05-16 |  |  |  |
| 54 | 1.3.1.6 | **Environment** |  | 4d | 2008-04-28 A | 2008-05-01 A |  | 100% |  |  |  |  | 48h | 48h |
| 55 | 1.3.1.6.1 | Eclipse configuration |  | 2d | 2008-04-29 A | 2008-04-30 A |  | 100% |  |  | finish no earlier than 2008-04-30 | ET | 16h | 16h |
| 56 | 1.3.1.6.2 | CI environment |  | 2d | 2008-04-28 A | 2008-04-29 A |  | 100% |  |  | finish no earlier than 2008-04-29 | ET | 16h | 16h |
| 57 | 1.3.1.6.3 | ANT |  | 2d | 2008-04-30 A | 2008-05-01 A |  | 100% |  |  | finish no earlier than 2008-05-01 | ET | 16h | 16h |
| 58 | 1.3.1.7 | **Configuration and Change Management** |  | 1d? | 2008-05-16 | 2008-05-16 |  |  | 142d |  |  |  | 16h |  |
| 59 | 1.3.1.7.1 | Set up defect tracker |  | 1d? | 2008-05-16 | 2008-05-16 |  |  | 142d |  | finish no earlier than 2008-05-16 | ET | 8h |  |
| 60 | 1.3.1.7.2 | Set up feature request tracker |  | 1d? | 2008-05-16 | 2008-05-16 |  |  | 142d |  | finish no earlier than 2008-05-16 | ET | 8h |  |
| 61 | 1.3.1.8 | **Deployment** |  | 16d | 2008-04-21 A | 2008-05-12 A |  | 100% |  |  |  |  | 144h | 144h |
| 62 | 1.3.1.8.1 | Get DEV environment |  | 8d | 2008-04-21 A | 2008-04-30 A |  | 100% |  |  | finish no earlier than 2008-04-30 | SJ | 64h | 64h |
| 63 | 1.3.1.8.2 | ARC document (Draft) |  | 3d | 2008-04-28 A | 2008-04-30 A |  | 100% |  |  | start no earlier than 2008-04-28 | SJ | 24h | 24h |
| 64 | 1.3.1.8.3 | Identify and setup access for NCIA, caArray and CTMS |  | 7d | 2008-05-02 A | 2008-05-12 A |  | 100% |  |  | start no earlier than 2008-05-02 | SJ | 56h | 56h |
| 65 | 1.3.1.9 | Elaboration 1 Complete | milestone | 0d | 2008-05-16 | 2008-05-16 | 52 |  | 29d | 0d |  |  |  |  |
| 66 | 1.3.2 | **Elaboration - Iteration 2** |  | 33d? | 2008-05-19 | 2008-07-03 | 65 |  | 37.33d | 0d |  |  | 1208h |  |
| 67 | 1.3.2.1 | **Project Management** |  | 12d? | 2008-05-29 | 2008-06-13 |  |  | 51.33d |  |  |  | 32h |  |
| 68 | 1.3.2.1.1 | Schedule |  | 2d | 2008-05-29 | 2008-05-30 |  |  | 61.33d |  | finish no earlier than 2008-05-30 | SJ | 16h |  |
| 69 | 1.3.2.1.2 | Risk Management |  | 1d? | 2008-06-13 | 2008-06-13 |  |  | 51.33d |  | finish no earlier than 2008-06-13 | SJ | 8h |  |
| 70 | 1.3.2.1.3 | E2 Iteration Assessment |  | 1d? | 2008-06-13 | 2008-06-13 |  |  | 51.33d |  | finish no earlier than 2008-06-13 | SJ | 8h |  |
| 71 | 1.3.2.2 | **Requirements** |  | 11.5d? | 2008-05-29 | 2008-06-13 |  |  | 51.33d |  |  |  | 376h |  |
| 72 | 1.3.2.2.1 | Modify Vision Document |  | 2d | 2008-06-06 | 2008-06-09 |  |  | 55.33d |  | finish no earlier than 2008-06-09 | SJ | 16h |  |
| 73 | 1.3.2.2.2 | Draft Storyboard for caIntegrator2 |  | 2d | 2008-06-12 | 2008-06-13 |  |  | 51.33d |  | start no earlier than 2008-06-12 | SJ | 16h |  |
| 74 | 1.3.2.2.3 | Draft Poster for caBIG Annual meeting |  | 2d | 2008-06-06 | 2008-06-09 |  |  | 55.33d |  | finish no earlier than 2008-06-09 | SJ | 16h |  |
| 75 | 1.3.2.2.4 | Wireframes for UC |  | 6.5d | 2008-05-29 | 2008-06-06 |  |  | 56.33d |  | finish no earlier than 2008-06-06 | MR; WF | 104h |  |
| 76 | 1.3.2.2.5 | Review wireframes |  | 6d | 2008-06-05 | 2008-06-12 |  |  | 52.33d |  | start no earlier than 2008-06-05 | WF; MR; SM | 144h |  |
| 77 | 1.3.2.2.6 | Develop User Interface |  | 8d | 2008-06-03 | 2008-06-12 |  |  | 52.33d |  | start no earlier than 2008-06-03 | MR | 64h |  |
| 78 | 1.3.2.2.7 | Internal Review of Use Cases/Vision |  | 1d? | 2008-06-05 | 2008-06-05 |  |  | 57.33d |  | finish no earlier than 2008-06-05 |  |  |  |
| 79 | 1.3.2.2.8 | External Review of Use Cases/Vision |  | 1d? | 2008-06-12 | 2008-06-12 |  |  | 52.33d |  | finish no earlier than 2008-06-12 |  |  |  |
| 80 | 1.3.2.2.9 | Requirements Management Plan |  | 1d | 2008-06-03 | 2008-06-03 |  |  | 59.33d |  | start no earlier than 2008-06-03 | ET | 8h |  |
| 81 | 1.3.2.2.10 | Set uprequirements management environment |  | 1d | 2008-06-04 | 2008-06-04 |  |  | 58.33d |  | start no earlier than 2008-06-04 | ET | 8h |  |

Notes:
- 57: Check the options for using MAVEN - automate the process with Paul.

| ID | WBS | Task | Duration | Start | Finish | Predecessors | Total slack | Free slack | Constraint | Resources | Work |
| --- | --- | --- | --- | --- | --- | --- | --- | --- | --- | --- | --- |
| 82 | 1.3.2.3 | **Analysis and Design** | 27d? | 2008-05-27 | 2008-07-02 |  | 38.33d |  |  |  | 120h |
| 83 | 1.3.2.3.1 | Use-Case Design: Use Workspace | 1d? | 2008-05-27 | 2008-05-27 |  | 62.33d | 10d | start no earlier than 2008-05-27 | ET | 8h |
| 84 | 1.3.2.3.2 | Use-Case Design: Deploy Study | 2d | 2008-05-29 | 2008-05-30 |  | 54.33d | 0d | start no earlier than 2008-05-29 | ET | 16h |
| 85 | 1.3.2.3.3 | Use-Case Design: Manage Queries | 2d | 2008-06-11 | 2008-06-12 |  | 40.33d | 1d | start no earlier than 2008-06-11 | ET | 16h |
| 86 | 1.3.2.3.4 | Use-Case Design: Perform Analysis | 2d | 2008-06-17 | 2008-06-18 |  | 43.33d | 6d | start no earlier than 2008-06-17 | ET | 16h |
| 87 | 1.3.2.3.5 | Draft Software Architecture Document | 5d | 2008-05-27 | 2008-06-02 |  | 60.33d |  | start no earlier than 2008-05-27 | MH | 40h |
| 88 | 1.3.2.3.6 | Final Software Architecture Document | 3d | 2008-06-30 | 2008-07-02 |  | 38.33d |  | start no earlier than 2008-06-30 | MH | 24h |
| 89 | 1.3.2.4 | **Implementation** | 33d? | 2008-05-19 | 2008-07-03 |  | 37.33d |  |  |  | 552h |
| 90 | 1.3.2.4.1 | Complete caCORE integration | 5d? | 2008-05-19 | 2008-05-23 |  | 65.33d |  | start no earlier than 2008-05-19 | MH | 40h |
| 91 | 1.3.2.4.2 | Implement Deploy Study | 7d | 2008-06-02 | 2008-06-10 | 84 | 54.33d |  | start no earlier than 2008-06-02 | ET; MH; TJ | 168h |
| 92 | 1.3.2.4.3 | Implement Use Workspace | 2d | 2008-06-11 | 2008-06-12 | 83 | 52.33d |  | start no earlier than 2008-06-11 | TJ; MH; ET | 48h |
| 93 | 1.3.2.4.4 | Implement Manage Queries | 9d | 2008-06-16 | 2008-06-26 | 85 | 39.33d | 0d | start no earlier than 2008-06-16 | TJ; MH; ET | 216h |
| 94 | 1.3.2.4.5 | Implement Perform Data Analysis: simple GenePattern integration | 5d | 2008-06-27 | 2008-07-03 | 86 | 37.33d |  | start no earlier than 2008-06-27 | TJ; MH | 80h |
| 95 | 1.3.2.5 | **Test** | 5d | 2008-06-27 | 2008-07-03 |  | 37.33d |  |  |  | 64h |
| 96 | 1.3.2.5.1 | Performance/load test Manage Queries | 3d | 2008-06-27 | 2008-07-01 | 93 | 39.33d |  | start no earlier than 2008-06-13 | ET | 24h |
| 97 | 1.3.2.5.2 | Unit Tests/Functional Tests | 5d | 2008-06-27 | 2008-07-03 |  | 37.33d |  | finish no earlier than 2008-07-03 | ET | 40h |
| 98 | 1.3.2.6 | **Environment** | 3d? | 2008-06-19 | 2008-06-23 |  | 45.33d |  |  |  | 16h |
| 99 | 1.3.2.6.1 | Write Development Case | 1d? | 2008-06-23 | 2008-06-23 |  | 45.33d |  | start no earlier than 2008-06-23 | ET | 8h |
| 100 | 1.3.2.6.2 | Configure nightly build | 1d? | 2008-06-19 | 2008-06-19 |  | 47.33d |  | start no earlier than 2008-06-19 | ET | 8h |
| 101 | 1.3.2.7 | **Configuration and Change Management** | 2d? | 2008-06-16 | 2008-06-17 |  | 49.33d |  |  |  | 32h |
| 102 | 1.3.2.7.1 | Set up defect tracker | 1d? | 2008-06-16 | 2008-06-16 |  | 49.33d | 0d | start no earlier than 2008-06-16 | SJ; ET | 16h |
| 103 | 1.3.2.7.2 | Set up feature request tracker | 1d? | 2008-06-17 | 2008-06-17 | 102 | 49.33d |  |  | SJ; ET | 16h |
| 104 | 1.3.2.8 | **Deployment** | 2d | 2008-06-19 | 2008-06-20 |  | 46.33d |  |  |  | 16h |
| 105 | 1.3.2.8.1 | Deploy to DEV tier | 2d | 2008-06-19 | 2008-06-20 |  | 46.33d |  | start no earlier than 2008-06-19 | ET | 16h |
| 106 | 1.3.2.9 | Elaboration 2 Complete | 1d? | 2008-07-03 | 2008-07-03 |  | 37.33d |  | start no earlier than 2008-07-03 |  |  |

| ID | WBS | Task | Duration | Start | Finish | Predecessors | Complete | Remaining | Total slack | Free slack | Constraint | Resources | Work | Actual work |
| --- | --- | --- | --- | --- | --- | --- | --- | --- | --- | --- | --- | --- | --- | --- |
| 107 | 1.3.3 | **Elaboration - Iteration 3** | 61d? | 2008-07-07 A | 2008-09-30 | 66 | 42% | 35.67d? | 12d | 0d |  |  | 2144h | 920h |
| 108 | 1.3.3.1 | **Project Management** | 28d | 2008-07-07 A | 2008-08-13 A |  | 100% |  |  |  |  |  | 72h | 72h |
| 109 | 1.3.3.1.1 | Schedule | 1d | 2008-07-07 A | 2008-07-07 A |  | 100% |  |  |  | finish no earlier than 2008-05-30 | SJ | 8h | 8h |
| 110 | 1.3.3.1.2 | Risk Management | 3d | 2008-07-07 A | 2008-07-09 A |  | 100% |  |  |  | finish no earlier than 2008-06-13 | SJ | 24h | 24h |
| 111 | 1.3.3.1.3 | E2 Iteration Assessment | 2d | 2008-08-07 A | 2008-08-08 A |  | 100% |  |  |  | start no earlier than 2008-08-07 | SJ | 16h | 16h |
| 112 | 1.3.3.1.4 | E3 Iteration Plan | 3d | 2008-08-11 A | 2008-08-13 A |  | 100% |  |  |  | start no earlier than 2008-08-11 | SJ | 24h | 24h |
| 113 | 1.3.3.2 | **Requirements** | 48d? | 2008-07-07 A | 2008-09-11 |  | 73% | 13d? | 25d |  |  |  | 384h | 280h |
| 114 | 1.3.3.2.1 | Wireframes for Perform Analysis | 10d? | 2008-07-07 A | 2008-07-18 A |  | 100% |  |  |  | start no earlier than 2008-07-07 | WF | 80h | 80h |
| 115 | 1.3.3.2.2 | Requirements for View Images | 10d? | 2008-07-14 A | 2008-07-25 A |  | 100% |  |  |  | finish no earlier than 2008-07-25 | WF | 80h | 80h |
| 116 | 1.3.3.2.3 | Finalize requirements for view images | 5d | 2008-08-25 | 2008-08-29 |  |  |  | 28d | 4d | start no earlier than 2008-08-25 | WF | 40h |  |
| 117 | 1.3.3.2.4 | Requirements for Gene Summary data | 10d | 2008-08-18 A | 2008-08-29 A |  | 100% |  |  |  | start no earlier than 2008-08-18 | WF | 80h | 80h |
| 118 | 1.3.3.2.5 | Document various features discussed | 5d | 2008-08-25 A | 2008-08-29 A |  | 100% |  |  |  | start no earlier than 2008-08-25 | WF | 40h | 40h |
| 119 | 1.3.3.2.6 | Demo Presentations | 4d | 2008-09-08 | 2008-09-11 |  |  |  | 25d |  | start no earlier than 2008-09-08 | WF | 32h |  |
| 120 | 1.3.3.2.7 | Review Vision Document | 1d | 2008-08-25 | 2008-08-25 |  |  |  | 37d |  | start no earlier than 2008-08-25 | SJ | 8h |  |
| 121 | 1.3.3.2.8 | Draft Storyboard for caIntegrator2 | 2d | 2008-09-02 | 2008-09-03 |  |  |  | 31d |  | start no earlier than 2008-09-01 | SJ | 16h |  |
| 122 | 1.3.3.2.9 | External Review of Use Cases/Vision | 1d? | 2008-09-04 | 2008-09-04 |  |  |  | 30d |  | start no earlier than 2008-09-04 | SJ | 8h |  |
| 123 | 1.3.3.3 | **Analysis and Design** | 44d? | 2008-07-07 A | 2008-09-05 |  | 63% | 16.26d? | 29d |  |  |  | 368h | 232h |
| 124 | 1.3.3.3.1 | Manage Queries-Supporting Class Model | 5d | 2008-07-07 A | 2008-07-11 A |  | 100% |  |  |  | start no earlier than 2008-07-07 | ET | 40h | 40h |
| 125 | 1.3.3.3.2 | Use-Case Design:Manage Queries | 3d | 2008-07-15 A | 2008-07-17 A | 124 | 100% |  |  |  | start no earlier than 2008-07-15 | ET | 24h | 24h |
| 126 | 1.3.3.3.3 | Model Changes (Data Type Support) | 3d? | 2008-07-07 A | 2008-07-09 A |  | 100% |  |  |  | finish no earlier than 2008-07-09 | MH | 24h | 24h |
| 127 | 1.3.3.3.4 | Model Changes (UoM, Range Search) | 3d? | 2008-07-07 A | 2008-07-09 A |  | 100% |  |  |  | start no earlier than 2008-07-07 | MH | 24h | 24h |
| 128 | 1.3.3.3.5 | Work with VCDE/Arc Mentor | 15d | 2008-07-07 A | 2008-07-25 A |  | 100% |  |  |  | start no earlier than 2008-07-07 | MH | 120h | 120h |
| 129 | 1.3.3.3.6 | Use-Case Design: Perform Analysis | 14d | 2008-08-18 | 2008-09-05 | 114 |  |  | 24d | 0d | finish no earlier than 2008-09-05 | ET | 112h |  |
| 130 | 1.3.3.3.7 | Final Software Architecture Document | 3d | 2008-07-28 | 2008-07-30 |  |  |  | 55d |  | start no earlier than 2008-07-28 | JP | 24h |  |

| ID | WBS | Task | Duration | Start | Finish | Predecessors | Complete | Remaining | Total slack | Free slack | Constraint | Resources | Work | Actual work |
| --- | --- | --- | --- | --- | --- | --- | --- | --- | --- | --- | --- | --- | --- | --- |
| 131 | 1.3.3.4 | **Implementation** | 61d | 2008-07-07 A | 2008-09-30 |  | 33% | 40.98d | 12d |  |  |  | 1200h | 336h |
| 132 | 1.3.3.4.1 | **Implement Deploy Study** | 61d | 2008-07-07 A | 2008-09-30 |  | 68% | 19.78d | 12d |  |  |  | 200h | 200h |
| 133 | 1.3.3.4.1.1 | Mapping functionality Genomics, Retrieve Array Data, Feedback from review | 5d | 2008-07-07 A | 2008-07-11 A |  | 100% |  |  |  |  | ET | 40h | 40h |
| 134 | 1.3.3.4.1.2 | Datatype changes | 3d | 2008-07-10 A | 2008-07-14 A |  | 100% |  |  |  | start no earlier than 2008-07-10 | ET | 24h | 24h |
| 135 | 1.3.3.4.1.3 | NCIA mapping functionality | 7d | 2008-08-07 A | 2008-08-15 A |  | 100% |  |  |  | start no earlier than 2008-08-07 | SR | 56h | 56h |
| 136 | 1.3.3.4.1.4 | Genomics mapping functionality (debug) | 4d | 2008-08-05 A | 2008-08-08 A |  | 100% |  |  |  | start no earlier than 2008-08-05 | JP | 32h | 32h |
| 137 | 1.3.3.4.1.5 | Validation of Image ID with NCIA | 3d | 2008-08-20 A | 2008-08-22 A |  | 100% |  |  |  | start no earlier than 2008-08-20 | SR | 24h | 24h |
| 138 | 1.3.3.4.1.6 | Fix upload file mapping issues for array | 3d | 2008-08-25 A | 2008-08-27 A |  | 100% |  |  |  | start no earlier than 2008-08-25 | SR | 24h | 24h |
| 139 | 1.3.3.4.1.7 | Bug Fixes for Demo(Logo, caDSR type,NCIA annotation, Saved Queries in WS) | 12d | 2008-09-15 | 2008-09-30 |  |  |  | 12d |  | start no earlier than 2008-09-15 |  |  |  |
| 140 | 1.3.3.4.2 | Security - Authentication & Authorization | 5d | 2008-07-07 A | 2008-07-11 A |  | 100% |  |  |  | start no earlier than 2008-07-07 | TJ | 40h | 40h |
| 141 | 1.3.3.4.3 | **Implement Manage Queries** | 35d | 2008-07-24 A | 2008-09-11 |  | 20% | 28.11d | 25d |  |  |  | 760h | 96h |
| 142 | 1.3.3.4.3.1 | Front End | 15d | 2008-08-21 | 2008-09-11 |  |  |  | 25d |  | start no earlier than 2008-08-21 | JP; ML | 240h |  |
| 143 | 1.3.3.4.3.2 | General Service Tier (Query Creation & Persistence) | 10d | 2008-08-18 | 2008-08-29 |  |  |  | 33d |  | start no earlier than 2008-08-18 | TJ | 80h |  |
| 144 | 1.3.3.4.3.3 | Query to Hibernate Query translation | 12d | 2008-07-24 A | 2008-08-08 A |  | 100% |  |  |  | finish no earlier than 2008-08-08 | TJ | 96h | 96h |
| 145 | 1.3.3.4.3.4 | ArrayDataService search functionality | 19d | 2008-08-11 | 2008-09-05 |  |  |  | 29d |  | finish no earlier than 2008-09-05 | TJ; ET | 304h |  |
| 146 | 1.3.3.4.3.5 | UI look and feel | 5d | 2008-08-29 | 2008-09-05 |  |  |  | 29d |  | finish no earlier than 2008-09-05 | MR | 40h |  |
| 147 | 1.3.3.4.4 | **Implement Perform Data Analysis: GenePattern integration & KM Plot** | 12d | 2008-08-27 | 2008-09-12 |  |  |  | 24d |  |  |  | 160h |  |
| 148 | 1.3.3.4.4.1 | GenePattern integration | 5d | 2008-09-08 | 2008-09-12 |  |  |  | 24d |  | start no earlier than 2008-09-08 | TJ | 40h |  |
| 149 | 1.3.3.4.4.2 | Analysis job definition | 5d | 2008-09-08 | 2008-09-12 | 129 |  |  | 24d |  | start no earlier than 2008-08-26 | JP | 40h |  |
| 150 | 1.3.3.4.4.3 | Service tier components for general analysis job management | 5d | 2008-08-27 | 2008-09-03 |  |  |  | 31d |  | start no earlier than 2008-08-27 | ML | 40h |  |
| 151 | 1.3.3.4.4.4 | KM Plot Implementation | 5d | 2008-09-03 | 2008-09-09 |  |  |  | 27d |  | start no earlier than 2008-09-03 | TJ | 40h |  |
| 152 | 1.3.3.4.5 | **View Images** | 5d | 2008-09-08 | 2008-09-12 | 116 |  |  | 24d |  |  | ML | 40h |  |
| 153 | 1.3.3.4.5.1 | view Image using iSPY like or other tools | 5d | 2008-09-08 | 2008-09-12 |  |  |  | 24d |  | start no earlier than 2008-09-08 |  |  |  |
| 154 | 1.3.3.5 | **Test** | 24d | 2008-08-11 | 2008-09-12 |  |  |  | 23d |  |  |  | 64h |  |
| 155 | 1.3.3.5.1 | Prepare Prep Data | 3d | 2008-09-02 | 2008-09-04 |  |  |  | 30d |  | start no earlier than 2008-09-02 | WF | 24h |  |
| 156 | 1.3.3.5.2 | Performance/load test Manage Queries | 5d | 2008-08-26 | 2008-09-02 |  |  |  | 32d |  | start no earlier than 2008-08-26 | ET | 40h |  |
| 157 | 1.3.3.5.3 | Unit Tests/Functional Tests | 6d | 2008-08-26 | 2008-09-03 |  |  |  | 31d |  | start no earlier than 2008-08-26 |  |  |  |
| 158 | 1.3.3.5.4 | QA Team Test | 24d | 2008-08-11 | 2008-09-12 |  |  |  | 23d | 0d | finish no earlier than 2008-09-12 |  |  |  |

| ID | WBS | Task | Duration | Start | Finish | Predecessors | Total slack | Free slack | Constraint | Resources | Work |
| --- | --- | --- | --- | --- | --- | --- | --- | --- | --- | --- | --- |
| 159 | 1.3.3.6 | **Environment** | 1d? | 2008-07-28 | 2008-07-28 |  | 57d |  |  |  | 8h |
| 160 | 1.3.3.6.1 | Configure nightly build | 1d? | 2008-07-28 | 2008-07-28 |  | 57d |  | start no earlier than 2008-07-28 | ET | 8h |
| 161 | 1.3.3.7 | **Configuration and Change Management** | 3d | 2008-08-07 | 2008-08-11 |  | 47d |  |  |  | 24h |
| 162 | 1.3.3.7.1 | Complete Feature Request/Tracking | 3d | 2008-08-07 | 2008-08-11 |  | 47d |  | start no earlier than 2008-08-07 | SJ | 24h |
| 163 | 1.3.3.8 | **Deployment** | 45d? | 2008-07-14 | 2008-09-15 |  | 23d |  |  |  | 24h |
| 164 | 1.3.3.8.1 | Deploy to DEV tier | 2d | 2008-07-14 | 2008-07-15 |  | 66d |  | start no earlier than 2008-07-14 | ET | 16h |
| 165 | 1.3.3.8.2 | Deploy to QA tier | 1d? | 2008-09-15 | 2008-09-15 | 158 | 18d |  | start no earlier than 2008-08-25 | TBD | 8h |
| 166 | 1.3.3.9 | Elaboration 3 Complete | 1d? | 2008-09-15 | 2008-09-15 | 158 | 23d |  | start no earlier than 2008-07-03 |  |  |
| 167 | 1.3.4 | **Construction Phase** | 48d? | 2008-10-01 | 2008-12-05 | 107 | 0d |  |  |  | 824h |
| 168 | 1.3.4.1 | **Construction - Iteration 1** | 23d? | 2008-10-01 | 2008-10-31 |  | 10d | 0d |  |  | 456h |
| 169 | 1.3.4.1.1 | **Project Management** | 7d | 2008-10-01 | 2008-10-09 |  | 26d |  |  |  | 56h |
| 170 | 1.3.4.1.1.1 | Schedule | 1d | 2008-10-01 | 2008-10-01 |  | 32d |  | start no earlier than 2008-10-01 | SJ | 8h |
| 171 | 1.3.4.1.1.2 | Risk Management | 1d | 2008-10-02 | 2008-10-02 |  | 31d |  | start no earlier than 2008-10-02 | SJ | 8h |
| 172 | 1.3.4.1.1.3 | E3 Iteration Assessment | 2d | 2008-10-03 | 2008-10-06 |  | 29d |  | start no earlier than 2008-10-03 | SJ | 16h |
| 173 | 1.3.4.1.1.4 | C1 Iteration Plan | 3d | 2008-10-07 | 2008-10-09 |  | 26d |  | start no earlier than 2008-10-07 | SJ | 24h |
| 174 | 1.3.4.1.2 | **Requirements** | 13d? | 2008-10-01 | 2008-10-17 |  | 20d |  |  |  | 120h |
| 175 | 1.3.4.1.2.1 | Elaborate further on view images | 10d? | 2008-10-06 | 2008-10-17 |  | 20d |  | start no earlier than 2008-10-06 | WF | 80h |
| 176 | 1.3.4.1.2.2 | Gforge Tracking for features & bugs | 5d | 2008-10-01 | 2008-10-07 |  | 28d |  | start no earlier than 2008-10-01 | WF | 40h |
| 177 | 1.3.4.1.3 | **Analysis and Design** | 3d | 2008-10-20 | 2008-10-22 |  | 17d |  |  |  | 24h |
| 178 | 1.3.4.1.3.1 | Final Software Architecture Document | 3d | 2008-10-20 | 2008-10-22 |  | 17d |  | start no earlier than 2008-10-20 | JP | 24h |
| 179 | 1.3.4.1.4 | **Implementation** | 23d | 2008-10-01 | 2008-10-31 |  | 10d |  |  |  | 160h |
| 180 | 1.3.4.1.4.1 | **Implement Deploy Study** | 10d | 2008-10-01 | 2008-10-14 |  | 23d |  |  |  |  |
| 181 | 1.3.4.1.4.1.1 | adding missing functionalities on Deploy Study implementation | 10d | 2008-10-01 | 2008-10-14 |  | 23d |  | start no earlier than 2008-10-01 |  |  |
| 182 | 1.3.4.1.4.2 | **Implement Manage Queries** | 20d | 2008-10-06 | 2008-10-31 |  | 10d |  |  |  |  |
| 183 | 1.3.4.1.4.2.1 | Complete Clinical, Image and Some Gene Expression Queries | 20d | 2008-10-06 | 2008-10-31 |  | 10d |  | start no earlier than 2008-10-06 |  |  |

| ID | WBS | Task | Duration | Start | Finish | Predecessors | Total slack | Constraint | Resources | Work |
| --- | --- | --- | --- | --- | --- | --- | --- | --- | --- | --- |
| 184 | 1.3.4.1.4.3 | **Implement Perform Data Analysis: GenePattern integration** | 15d | 2008-10-13 | 2008-10-31 |  | 10d |  |  | 120h |
| 185 | 1.3.4.1.4.3.1 | GenePattern Simple integration | 15d | 2008-10-13 | 2008-10-31 |  | 10d | start no earlier than 2008-10-13 | ET | 120h |
| 186 | 1.3.4.1.4.4 | **View Images** | 5d | 2008-10-06 | 2008-10-10 |  | 25d |  | ML | 40h |
| 187 | 1.3.4.1.4.4.1 | view Image using iSPY like or other tools | 5d | 2008-10-06 | 2008-10-10 |  | 25d | start no earlier than 2008-10-06 |  |  |
| 188 | 1.3.4.1.5 | Test | 21d | 2008-10-01 | 2008-10-29 |  | 12d | start no earlier than 2008-10-01 |  |  |
| 189 | 1.3.4.1.6 | **Environment** | 3d | 2008-10-01 | 2008-10-03 |  | 30d |  |  | 24h |
| 190 | 1.3.4.1.6.1 | Configure nightly build | 3d | 2008-10-01 | 2008-10-03 |  | 30d | start no earlier than 2008-10-01 | ET | 24h |
| 191 | 1.3.4.1.7 | **Configuration and Change Management** | 3d | 2008-10-06 | 2008-10-08 |  | 27d |  |  | 24h |
| 192 | 1.3.4.1.7.1 | Complete Feature Request/Tracking | 3d | 2008-10-06 | 2008-10-08 |  | 27d | start no earlier than 2008-10-06 | SJ | 24h |
| 193 | 1.3.4.1.8 | **Deployment** | 6d | 2008-10-06 | 2008-10-13 |  | 24d |  |  | 48h |
| 194 | 1.3.4.1.8.1 | Deploy to DEV tier | 6d | 2008-10-06 | 2008-10-13 |  | 24d | start no earlier than 2008-10-06 | JP | 48h |
| 195 | 1.3.4.1.9 | Construction 1 Complete | 1d? | 2008-10-30 | 2008-10-30 |  | 11d | finish no earlier than 2008-10-30 |  |  |
| 196 | 1.3.4.2 | **Construction - Iteration 2** | 25d? | 2008-11-03 | 2008-12-05 | 168 | 0d |  |  | 368h |
| 197 | 1.3.4.2.1 | **Project Management** | 3d? | 2008-11-03 | 2008-11-05 |  | 22d |  |  | 56h |
| 198 | 1.3.4.2.1.1 | Schedule | 1d | 2008-11-03 | 2008-11-03 |  | 24d | start no earlier than 2008-10-01 | SJ | 8h |
| 199 | 1.3.4.2.1.2 | Risk Management | 1d | 2008-11-03 | 2008-11-03 |  | 24d | start no earlier than 2008-10-02 | SJ | 8h |
| 200 | 1.3.4.2.1.3 | C1 Iteration Assessment | 2d | 2008-11-03 | 2008-11-04 |  | 23d | start no earlier than 2008-10-03 | SJ | 16h |
| 201 | 1.3.4.2.1.4 | C2 Iteration Plan | 3d | 2008-11-03 | 2008-11-05 |  | 22d | start no earlier than 2008-10-07 | SJ | 24h |
| 202 | 1.3.4.2.1.5 | Beta Release Plan | 1d? | 2008-11-03 | 2008-11-03 |  | 24d |  |  |  |
| 203 | 1.3.4.2.2 | **Requirements** | 20d? | 2008-11-03 | 2008-11-28 |  | 5d |  |  | 80h |
| 204 | 1.3.4.2.2.1 | Time point - wire frames | 10d? | 2008-11-17 | 2008-11-28 |  | 5d | start no earlier than 2008-11-17 | WF | 80h |
| 205 | 1.3.4.2.2.2 | Update Gforge Tracking for features & bugs | 5d | 2008-11-03 | 2008-11-07 |  | 20d | start no earlier than 2008-10-01 |  |  |
| 206 | 1.3.4.2.2.3 | Documentations (Product Feature, User Guide) | 1d? | 2008-11-03 | 2008-11-03 |  | 24d |  |  |  |
| 207 | 1.3.4.2.2.4 | Vision Document Update | 1d? | 2008-11-03 | 2008-11-03 |  | 24d |  |  |  |
| 208 | 1.3.4.2.2.5 | User Story | 1d? | 2008-11-03 | 2008-11-03 |  | 24d |  |  |  |

| ID | WBS | Task | Duration | Start | Finish | Total slack | Constraint | Resources | Work |
| --- | --- | --- | --- | --- | --- | --- | --- | --- | --- |
| 209 | 1.3.4.2.3 | **Analysis and Design** | 3d | 2008-12-03 | 2008-12-05 | 0d |  |  | 24h |
| 210 | 1.3.4.2.3.1 | Final Software Architecture Document | 3d | 2008-12-03 | 2008-12-05 | 0d | start no earlier than 2008-12-03 | JP | 24h |
| 211 | 1.3.4.2.4 | **Implementation** | 25d | 2008-11-03 | 2008-12-05 | 0d |  |  | 112h |
| 212 | 1.3.4.2.4.1 | **Implement Deploy Study** | 10d | 2008-11-03 | 2008-11-14 | 15d |  |  |  |
| 213 | 1.3.4.2.4.1.1 | Adding Survival Time Definition, caDSR permissible values, bug fix | 10d | 2008-11-03 | 2008-11-14 | 15d | start no earlier than 2008-10-01 |  |  |
| 214 | 1.3.4.2.4.2 | **Implement Manage Queries** | 25d | 2008-11-03 | 2008-12-05 | 0d |  |  |  |
| 215 | 1.3.4.2.4.2.1 | Fold Change Definition and Queries | 10d | 2008-11-24 | 2008-12-05 | 0d | start no earlier than 2008-11-24 |  |  |
| 216 | 1.3.4.2.4.2.2 | Edit Queries | 10d | 2008-11-24 | 2008-12-05 | 0d | start no earlier than 2008-11-24 |  |  |
| 217 | 1.3.4.2.4.2.3 | Query Operator - datatype sensitive | 7d | 2008-11-03 | 2008-11-11 | 18d |  |  |  |
| 218 | 1.3.4.2.4.2.4 | Time Points | 15d | 2008-11-17 | 2008-12-05 | 0d | start no earlier than 2008-11-17 |  |  |
| 219 | 1.3.4.2.4.3 | **Implement Perform Data Analysis** | 24d | 2008-11-03 | 2008-12-04 | 1d |  |  | 112h |
| 220 | 1.3.4.2.4.3.1 | GenePattern integration for Queries | 14d | 2008-11-03 | 2008-11-20 | 11d | start no earlier than 2008-10-13 | ET | 112h |
| 221 | 1.3.4.2.4.3.2 | KM plot implementation for Clinical | 15d | 2008-11-14 | 2008-12-04 | 1d | start no earlier than 2008-11-14 |  |  |
| 222 | 1.3.4.2.4.3.3 | KM plot for Genomic | 7d | 2008-11-17 | 2008-11-25 | 8d | start no earlier than 2008-11-17 |  |  |
| 223 | 1.3.4.2.5 | **Test** | 10d | 2008-11-10 | 2008-11-21 | 10d |  |  | 32h |
| 224 | 1.3.4.2.5.1 | Setup GForge | 4d | 2008-11-10 | 2008-11-13 | 16d | start no earlier than 2008-11-10 | JP | 32h |
| 225 | 1.3.4.2.5.2 | QA team to write test cases | 10d | 2008-11-10 | 2008-11-21 | 10d | start no earlier than 2008-11-10 |  |  |
| 226 | 1.3.4.2.6 | Environment | 3d | 2008-11-03 | 2008-11-05 | 22d |  |  |  |
| 227 | 1.3.4.2.7 | **Configuration and Change Management** | 3d | 2008-11-03 | 2008-11-05 | 22d |  |  | 24h |
| 228 | 1.3.4.2.7.1 | Feature Request/Tracking | 3d | 2008-11-03 | 2008-11-05 | 22d | start no earlier than 2008-10-06 | SJ | 24h |
| 229 | 1.3.4.2.8 | **Deployment** | 5d | 2008-12-01 | 2008-12-05 | 0d |  |  | 40h |
| 230 | 1.3.4.2.8.1 | Deploy to QA tier | 5d | 2008-12-01 | 2008-12-05 | 0d | start no earlier than 2008-12-01 | QA | 40h |
| 231 | 1.3.4.2.9 | Construction 2 Complete | 1d? | 2008-12-05 | 2008-12-05 | 0d | finish no earlier than 2008-12-05 |  |  |
