# trWorkbench 1.0

Schedule from MS Project, 2008-03-19 to 2008-04-18, A marks actual dates.
NCI

## Calendars

- Standard: Mon-Fri 08:00-12:00, 13:00-17:00; Sat-Sun off.

## Resources

| Resource |
| --- |
| Subha Madhavan |
| Eric Tavela |
| TJ Andrews |
| Michael Holck |
| Shine Jacob |

## Schedule

| ID | WBS | Task | Duration | Start | Finish | Predecessors | Complete | Remaining | Total slack | Free slack | Constraint | Resources | Work | Actual work |
| --- | --- | --- | --- | --- | --- | --- | --- | --- | --- | --- | --- | --- | --- | --- |
| 1 | 1 | **TrWorkbench 1.0** | 23d? | 2008-03-19 A | 2008-04-18 |  | 5% | 21.76d? | 0d |  |  |  | 752h | 32h |
| 2 | 1.1 | **Inception phase** | 23d? | 2008-03-19 A | 2008-04-18 |  | 5% | 21.76d? | 0d |  |  |  | 752h | 32h |
| 3 | 1.1.1 | **Inception Iteration 1** | 23d? | 2008-03-19 A | 2008-04-18 |  | 5% | 21.76d? | 0d |  |  |  | 752h | 32h |
| 4 | 1.1.1.1 | **Requirements** | 16d? | 2008-03-19 A | 2008-04-09 |  | 29% | 11.43d? | 7d |  |  |  | 112h | 32h |
| 5 | 1.1.1.1.1 | Develop Vision | 2d? | 2008-03-19 A | 2008-03-20 A |  | 100% |  |  |  |  | Subha Madhavan | 16h | 16h |
| 6 | 1.1.1.1.2 | Find Actors and Use Cases | 2d | 2008-03-19 A | 2008-03-20 A |  | 100% |  |  |  |  | Eric Tavela | 16h | 16h |
| 7 | 1.1.1.1.3 | Detail a Use Case (multiple) | 5d | 2008-03-27 | 2008-04-02 | 6 |  |  | 7d | 0d | finish no earlier than 2008-04-02 | Eric Tavela | 40h |  |
| 8 | 1.1.1.1.4 | Finalize Use Case Model | 5d | 2008-04-03 | 2008-04-09 | 7 |  |  | 7d |  | start no earlier than 2008-04-02 | Eric Tavela | 40h |  |
| 9 | 1.1.1.2 | **Analysis and Design** | 18d | 2008-03-26 | 2008-04-18 |  |  |  | 0d |  |  |  | 432h |  |
| 10 | 1.1.1.2.1 | Architectural Analysis | 4d | 2008-03-26 | 2008-03-31 |  |  |  | 14d |  | start no earlier than 2008-03-26 | Eric Tavela [50%]; Michael Holck [50%] | 24h |  |
| 11 | 1.1.1.2.2 | **Construct Architectural Proof of Concept** | 17d | 2008-03-27 | 2008-04-18 |  |  |  | 0d |  |  |  | 408h |  |
| 12 | 1.1.1.2.2.1 | Investigate clinical data representation approaches | 12d | 2008-03-27 | 2008-04-11 |  |  |  | 0d |  | start no earlier than 2008-03-27 | Michael Holck | 96h |  |
| 13 | 1.1.1.2.2.2 | Analyse genomic data storage and retrieval | 8d | 2008-04-02 | 2008-04-11 |  |  |  | 5d |  | finish no earlier than 2008-04-11 | Eric Tavela; Michael Holck; TJ Andrews | 192h |  |
| 14 | 1.1.1.2.2.3 | Define integrated object model (clinical, genomic, imaging) | 5d | 2008-04-14 | 2008-04-18 | 12 |  |  | 0d |  |  | Eric Tavela; Michael Holck; TJ Andrews | 120h |  |
| 15 | 1.1.1.3 | **UI Analysis** | 7d? | 2008-03-27 | 2008-04-04 |  |  |  | 10d |  |  |  | 56h |  |
| 16 | 1.1.1.3.1 | Analysis of existing caIntegrator UI and Analysis tools (KM Plots, GenePattern etc) | 7d? | 2008-03-27 | 2008-04-04 |  |  |  | 10d |  | finish no earlier than 2008-04-04 | TJ Andrews | 56h |  |
| 17 | 1.1.1.4 | **Project Management** | 23d? | 2008-03-19 | 2008-04-18 |  |  |  | 0d |  |  |  | 152h |  |
| 18 | 1.1.1.4.1 | Develop Iteration Plan: I1 | 3d | 2008-03-19 | 2008-03-21 |  |  |  | 20d |  |  | Shine Jacob | 24h |  |
| 19 | 1.1.1.4.2 | Identify and Assess Risks | 10d | 2008-03-24 | 2008-04-04 |  |  |  | 10d |  | finish no earlier than 2008-04-04 | Shine Jacob | 80h |  |
| 20 | 1.1.1.4.3 | Develop Iteration Plan: E1 | 5d? | 2008-04-14 | 2008-04-18 |  |  |  | 0d |  | finish no earlier than 2008-04-18 | Shine Jacob | 40h |  |
| 21 | 1.1.1.4.4 | Assess Iteration | 1d? | 2008-04-18 | 2008-04-18 |  |  |  | 0d |  | start no earlier than 2008-04-18 | Shine Jacob | 8h |  |
| 22 | 1.1.1.5 | **Environment** | 5d? | 2008-04-14 | 2008-04-18 |  |  |  | 0d |  |  |  |  |  |
| 23 | 1.1.1.5.1 | Setup Tools | 5d? | 2008-04-14 | 2008-04-18 |  |  |  | 0d |  | finish no earlier than 2008-04-18 |  |  |  |

Notes:
- 5: - Already have Subha's Vision content / - Record Features (in GForge) / - Record non-functional requirements at this level (will be in Supplementary Specification in Elaboration)
- 10: Develop Architecture Overview / Survey Available Assets / Define the High-Level Organization of Subsystems / Identify Key Abstractions / Develop Deployment Overview
- 19: - Ongoing
- 23: GForge / Subversion / Enterprise Architect / Choose IDE approach
